# ERPNET_Implement_TAX

Schedule from MS Project, 2015-06-29 to 2016-04-05, status date 2015-05-08, costs in $, A marks actual dates.

## Calendars

- Standard: Mon-Fri 08:00-12:00, 13:00-17:00; Sat-Sun off. Exceptions (off unless hours are given): 2016-01-01 (Tet tay), 2016-02-05 to 2016-02-12 (Tet am).

## Resources

| Resource | Group | Rate | Cost per use |
| --- | --- | --- | --- |
| Bảo Anh | BA | 8.75 | 8.75 |
| Quốc Tuấn | DEV | 8.75 | 8.75 |
| Tấn Phú | TL | 8.75 | 17.5 |
| Thị Hạnh | BA | 8.75 | 8.75 |
| Trí Thiện | DEV | 8.75 | 8.75 |
| Phát Danh | TL | 8.75 | 8.75 |
| Thanh Sơn | BA | 8.75 | 8.75 |
| Hoàng Vũ | BA | 8.75 | 8.75 |
| Đức Quý | DEV | 8.75 | 8.75 |
| Kim Vũ | DEV | 8.75 | 8.75 |
| Chiến Thắng | DEV |  |  |
| Lệ Huyền | DEV |  |  |

## Schedule

| ID | WBS | Task | Duration | Start | Finish | Predecessors | Complete | Remaining | Total slack | Free slack | Constraint | Resources | Work | Actual work | Cost | Actual cost |
| --- | --- | --- | --- | --- | --- | --- | --- | --- | --- | --- | --- | --- | --- | --- | --- | --- |
| 1 | 1 | **ACC 2015** | 194.25d | 2015-06-29 08:00 A | 2016-04-05 10:00 |  | 41% | 113.89d | 0d |  |  |  | 963h | 398.4h | 5,206.25 | 1,286.25 |
| 2 | 1.1 | **Báo cáo thuế** | 194.25d | 2015-06-29 08:00 A | 2016-04-05 10:00 |  | 41% | 113.89d | 0d |  |  |  | 963h | 398.4h | 5,206.25 | 1,286.25 |
| 3 | 1.1.1 | **Analyze** | 183.38d | 2015-06-29 08:00 A | 2016-03-21 11:00 |  | 47% | 96.95d | 0d |  |  |  | 244h | 115h | 2,528.75 | 1,198.75 |
| 4 | 1.1.1.1 | **Danh mục chung** | 156.12d | 2015-06-29 08:00 A | 2016-02-03 09:00 |  | 67% | 52.04d | 8.12d |  |  |  | 12h | 8h | 131.25 | 87.5 |
| 5 | 1.1.1.1.1 | Danh mục gia hạn | 4h | 2015-06-29 08:00 A | 2015-06-29 12:00 A |  | 100% |  |  |  | start no earlier than 2015-06-29 08:00 | Hoàng Vũ | 4h | 4h | 43.75 | 43.75 |
| 6 | 1.1.1.1.2 | Danh mục ngành nghể | 4h | 2015-06-29 13:00 A | 2015-06-29 17:00 A | 5 | 100% |  |  |  |  | Hoàng Vũ | 4h | 4h | 43.75 | 43.75 |
| 7 | 1.1.1.1.3 | Danh mục ngành nghề có tỷ lệ thu nhập cao | 4h | 2016-02-02 14:00 | 2016-02-03 09:00 | 37 |  |  | 8.12d | 0d |  | Hoàng Vũ | 4h |  | 43.75 |  |
| 8 | 1.1.1.2 | **Thuế thu giá trị gia tăng** | 3.75d | 2015-06-30 08:00 A | 2015-07-03 15:00 A |  | 100% |  |  |  |  |  | 30h | 30h | 306.25 | 306.25 |
| 9 | 1.1.1.2.1 | **Cập nhật tờ khai thuế GTGT** | 1.25d | 2015-06-30 08:00 A | 2015-07-01 10:00 A |  | 100% |  |  |  |  |  | 10h | 10h | 105 | 105 |
| 10 | 1.1.1.2.1.1 | Tờ khai thuế GTGT (Tab 1) | 6h | 2015-06-30 08:00 A | 2015-06-30 15:00 A | 6 | 100% |  |  |  |  | Hoàng Vũ | 6h | 6h | 61.25 | 61.25 |
| 11 | 1.1.1.2.1.2 | Khai giải trình, bổ sung GTGT (Tab 2) | 4h | 2015-06-30 15:00 A | 2015-07-01 10:00 A | 10 | 100% |  |  |  |  | Hoàng Vũ | 4h | 4h | 43.75 | 43.75 |
| 12 | 1.1.1.2.2 | Danh sách tờ khai thuế GTGT | 4h | 2015-07-01 10:00 A | 2015-07-01 15:00 A | 11 | 100% |  |  |  |  | Hoàng Vũ | 4h | 4h | 43.75 | 43.75 |
| 13 | 1.1.1.2.3 | Báo cáo khai giải trình, bổ sung GTGT | 8h | 2015-07-01 15:00 A | 2015-07-02 15:00 A | 12 | 100% |  |  |  |  | Hoàng Vũ | 8h | 8h | 78.75 | 78.75 |
| 14 | 1.1.1.2.4 | Báo cáo tờ khai thuế GTGT | 8h | 2015-07-02 15:00 A | 2015-07-03 15:00 A | 13 | 100% |  |  |  |  | Hoàng Vũ | 8h | 8h | 78.75 | 78.75 |
| 15 | 1.1.1.3 | **Thuế tiêu thu đặc biệt** | 9.38d | 2015-07-03 15:00 A | 2015-07-17 09:00 A |  | 100% |  |  |  |  |  | 52h | 52h | 533.75 | 533.75 |
| 16 | 1.1.1.3.1 | Danh mục nhóm thuế TTDB | 2h | 2015-07-03 15:00 A | 2015-07-03 17:00 A | 14 | 100% |  |  |  |  | Hoàng Vũ | 2h | 2h | 26.25 | 26.25 |
| 17 | 1.1.1.3.2 | Danh sách bảng kê thuế TTDB bán ra | 4h | 2015-07-06 08:00 A | 2015-07-06 12:00 A | 16 | 100% |  |  |  |  | Hoàng Vũ | 4h | 4h | 43.75 | 43.75 |
| 18 | 1.1.1.3.3 | Cập nhật bảng kê thuế TTDB bán ra | 6h | 2015-07-06 13:00 A | 2015-07-07 10:00 A | 17 | 100% |  |  |  |  | Hoàng Vũ | 6h | 6h | 61.25 | 61.25 |
| 19 | 1.1.1.3.4 | Danh sách bảng kê thuế TTDB mua vào | 4h | 2015-07-07 10:00 A | 2015-07-07 15:00 A | 18 | 100% |  |  |  |  | Hoàng Vũ | 4h | 4h | 43.75 | 43.75 |
| 20 | 1.1.1.3.5 | Cập nhật bảng kê thuế TTDB mua vào | 6h | 2015-07-07 15:00 A | 2015-07-08 12:00 A | 19 | 100% |  |  |  |  | Hoàng Vũ | 6h | 6h | 61.25 | 61.25 |
| 21 | 1.1.1.3.6 | Danh sách tờ khai thuế TTDB | 4h | 2015-07-08 13:00 A | 2015-07-08 17:00 A | 20 | 100% |  |  |  |  | Hoàng Vũ | 4h | 4h | 43.75 | 43.75 |
| 22 | 1.1.1.3.7 | Cập nhật tờ khai thuế TTDB | 10h | 2015-07-13 16:00 A | 2015-07-15 09:00 A | 21, 128 | 100% |  |  |  |  | Hoàng Vũ | 10h | 10h | 96.25 | 96.25 |
| 23 | 1.1.1.3.8 | Báo cáo tờ khai thuế TTDB | 8h | 2015-07-15 09:00 A | 2015-07-16 09:00 A | 22 | 100% |  |  |  |  | Hoàng Vũ | 8h | 8h | 78.75 | 78.75 |
| 24 | 1.1.1.3.9 | Báo cáo khai giải trình, bổ sung TTDB | 8h | 2015-07-16 09:00 A | 2015-07-17 09:00 A | 23 | 100% |  |  |  |  | Hoàng Vũ | 8h | 8h | 78.75 | 78.75 |

Notes:
- 5: Đường dẫn tŕi liệu phân tích: / 1. Danh mục gia hạn / File phân tích: 10_DOCUMENT11_DESIGN12_Danh muc chung06_Danh muc gia han.xls / 2. Cập nhật gia hạn / File phân tích: 10_DOCUMENT11_DESIGN12_Danh muc chung07_Cap nhat gia han.xls / 3. File důng chung / - File định nghĩa bảng: 10_DOCUMENT11_DESIGNASOFT_ACT_TableDefinition.xlsx / - File danh sách Message: 10_DOCUMENT11_DESIGNASOFT_ACT_MessageList .xlsx / 4. Tạo dữ liệu Default cho Danh mục gia hạn / - File lưu trữ dữ liệu default: 10_DOCUMENT11_DESIGN12_Danh muc chung10_Du lieu mac dinh ban dau.xlsx ( Xem sheet DMGH) / // Danh comment/ Danh mục hệ thống, không cần mŕn hěnh nhập liệu
- 6: Đường dẫn tŕi liệu phân tích: / 1. Danh mục ngŕnh nghề / File phân tích: 10_DOCUMENT11_DESIGN12_Danh muc chung08_Danh muc nganh nghe.xls / 2. Cập nhật ngŕnh nghề / File phân tích: 10_DOCUMENT11_DESIGN12_Danh muc chung09_Cap nhat nganh nghe.xls / 3. File důng chung / - File định nghĩa bảng: 10_DOCUMENT11_DESIGNASOFT_ACT_TableDefinition.xlsx / - File danh sách Message: 10_DOCUMENT11_DESIGNASOFT_ACT_MessageList .xlsx / 4. Tạo dữ liệu Default cho Danh mục ngŕnh nghề / - File lưu trữ dữ liệu default: 10_DOCUMENT11_DESIGN12_Danh muc chung10_Du lieu mac dinh ban dau.xlsx ( Xem sheet DMNN) / // Danh comment/ Danh mục hệ thống, không cần mŕn hěnh nhập liệu
- 7: Danh mục hệ thống, không cần màn hình nhập liệu
- 9: Bổ sung Danh sách bảng kê
- 13: -> Báo cáo mới
- 14: Bổ sung Danh sách tờ khai / -- Danh noted -- / + Đổi màn hình báo cáo cũ thành dạng nhiều tabs (gồm Tờ khai và Tờ GTBS). / + Xuất XML bổ sung thêm Tờ GTBS / + Bổ sung các button chức năng [Sửa mẫu], [Ra Excel] xử lư theo tab đang được chọn
- 16: Update Mă thuế TTDB để kết xuất ra file XML đúng mă như HTKK
- 17: Bổ sung Danh sách bảng kê / -> Màn h́nh mới
- 18: Bổ sung thêm Check để kiêm tra thang/lần phát sinh / -> Màn h́nh mới
- 19: Bổ sung, điều chỉnh thông tin tręn phiếu
- 20: Bổ sung, điều chỉnh thông tin tręn phiếu
- 21: Bổ sung Danh sách tờ khai / -> Màn h́nh mới
- 22: Sửa màn hình Plugin thành màn hình Master-Detail / -- Danh noted -- / Tương tự thuế GTGT
- 23: + Đổi mŕn hěnh báo cáo cũ thŕnh dạng nhiều tabs (gồm Tờ khai vŕ Tờ GTBS). / + Xuất XML đính kčm BKMV, BKBR (kiểm tra xuất kčm tương tự tờ khai GTGT) vŕ Tờ GTBS / + Bổ sung các button chức năng [Sửa mẫu], [Ra Excel] xử lý theo tab đang được chọn
- 24: Báo cáo mới

| ID | WBS | Task | Duration | Start | Finish | Predecessors | Complete | Remaining | Total slack | Free slack | Resources | Work | Actual work | Cost | Actual cost |
| --- | --- | --- | --- | --- | --- | --- | --- | --- | --- | --- | --- | --- | --- | --- | --- |
| 25 | 1.1.1.4 | **Thuế bảo vệ môi trường** | 141.5d | 2015-07-17 09:00 A | 2016-02-02 14:00 |  | 46% | 75.99d | 8.12d |  |  | 54h | 25h | 577.5 | 271.25 |
| 26 | 1.1.1.4.1 | Danh mục vật tư | 2h | 2015-07-17 09:00 A | 2015-07-17 11:00 A | 24 | 100% |  |  |  | Hoàng Vũ | 2h | 2h | 26.25 | 26.25 |
| 27 | 1.1.1.4.2 | Danh mục nhóm thuế BVMT | 4h | 2015-07-17 11:00 A | 2015-07-17 16:00 A | 26 | 100% |  |  |  | Hoàng Vũ | 4h | 4h | 43.75 | 43.75 |
| 28 | 1.1.1.4.3 | Cập nhật hóa đơn mua vào kiêm phiếu nhập kho | 3h | 2015-07-17 16:00 | 2015-07-20 10:00 | 27 |  |  | 135.62d | 0d | Hoàng Vũ | 3h |  | 35 |  |
| 29 | 1.1.1.4.4 | Cập nhật hóa đơn mua hàng nhập khẩu | 3h | 2015-07-20 10:00 | 2015-07-20 14:00 | 28 |  |  | 135.62d | 0d | Hoàng Vũ | 3h |  | 35 |  |
| 30 | 1.1.1.4.5 | Cập nhật hóa đơn mua dịch vụ | 3h | 2015-07-20 14:00 | 2015-07-20 17:00 | 29 |  |  | 135.62d |  | Hoàng Vũ | 3h |  | 35 |  |
| 31 | 1.1.1.4.6 | Cập nhật hóa đơn bán hàng kiêm phiếu xuất kho | 3h | 2015-07-21 08:00 A | 2015-07-21 11:00 A | 30 | 100% |  |  |  | Hoàng Vũ | 3h | 3h | 35 | 35 |
| 32 | 1.1.1.4.7 | Cập nhật hóa đơn bán dịch vụ | 3h | 2015-07-21 11:00 A | 2015-07-21 15:00 A | 31 | 100% |  |  |  | Hoàng Vũ | 3h | 3h | 35 | 35 |
| 33 | 1.1.1.4.8 | Cập nhật hóa đơn hàng bán trả lại giảm giá | 3h | 2015-07-21 15:00 A | 2015-07-22 09:00 A | 32 | 100% |  |  |  | Hoàng Vũ | 3h | 3h | 35 | 35 |
| 34 | 1.1.1.4.9 | Cập nhật tờ khai thuế BVMT | 10h | 2015-07-22 09:00 A | 2015-07-23 11:00 A | 33 | 100% |  |  |  | Hoàng Vũ | 10h | 10h | 96.25 | 96.25 |
| 35 | 1.1.1.4.10 | Danh sách tờ khai thuế BVMT | 4h | 2015-07-23 11:00 | 2015-07-23 16:00 | 34 |  |  | 142.88d | 0d | Hoàng Vũ | 4h |  | 43.75 |  |
| 36 | 1.1.1.4.11 | Báo cáo tờ khai thuế BVMT | 8h | 2015-07-23 16:00 | 2015-07-24 16:00 | 35 |  |  | 142.88d | 133.75d | Hoàng Vũ | 8h |  | 78.75 |  |
| 37 | 1.1.1.4.12 | Báo cáo khai giải trình, bổ sung BVMT | 8h | 2016-02-01 14:00 | 2016-02-02 14:00 | 36, 141 |  |  | 8.12d | 0d | Hoàng Vũ | 8h |  | 78.75 |  |
| 38 | 1.1.1.5 | **Thuế thu nhập doanh nghiệp** | 4.75d | 2016-02-03 09:00 | 2016-02-17 16:00 |  |  |  | 8.12d |  |  | 38h |  | 393.75 |  |
| 39 | 1.1.1.5.1 | **Cập nhật tờ khai thuế TNDN** | 2.25d | 2016-02-03 09:00 | 2016-02-15 11:00 |  |  |  | 8.12d |  |  | 18h |  | 192.5 |  |
| 40 | 1.1.1.5.1.1 | Tờ khai thuế TNDN (Tab 1) | 6h | 2016-02-03 09:00 | 2016-02-03 16:00 | 7 |  |  | 8.12d | 0d | Hoàng Vũ | 6h |  | 61.25 |  |
| 41 | 1.1.1.5.1.2 | Kết quả kinh doanh theo báo cáo tài chính (Tab 2) | 4h | 2016-02-03 16:00 | 2016-02-04 11:00 | 40 |  |  | 8.12d | 0d | Hoàng Vũ | 4h |  | 43.75 |  |
| 42 | 1.1.1.5.1.3 | Kết chuyển lãi lỗ (Tab 3) | 4h | 2016-02-04 11:00 | 2016-02-04 16:00 | 41 |  |  | 8.12d | 0d | Hoàng Vũ | 4h |  | 43.75 |  |
| 43 | 1.1.1.5.1.4 | Khai giải trình, bổ sung TNDN (Tab 4) | 4h | 2016-02-04 16:00 | 2016-02-15 11:00 | 42 |  |  | 8.12d | 0d | Hoàng Vũ | 4h |  | 43.75 |  |
| 44 | 1.1.1.5.2 | Danh sách tờ khai thuế TNDN | 4h | 2016-02-15 11:00 | 2016-02-15 16:00 | 43 |  |  | 8.12d | 0d | Hoàng Vũ | 4h |  | 43.75 |  |
| 45 | 1.1.1.5.3 | Báo cáo tờ khai thuế TNDN | 8h | 2016-02-15 16:00 | 2016-02-16 16:00 | 44 |  |  | 8.12d | 0d | Hoàng Vũ | 8h |  | 78.75 |  |
| 46 | 1.1.1.5.4 | Báo cáo khai giải trình, bổ sung TNDN | 8h | 2016-02-16 16:00 | 2016-02-17 16:00 | 45, 128 |  |  | 8.12d | 7.62d | Hoàng Vũ | 8h |  | 78.75 |  |
| 47 | 1.1.1.6 | **Thuế thu nhập cá nhân** | 7.25d | 2016-03-10 09:00 | 2016-03-21 11:00 |  |  |  | 0d |  |  | 58h |  | 586.25 |  |
| 48 | 1.1.1.6.1 | Cập nhật tờ khai thuế TNCN-02/KK-TNCN | 8h | 2016-03-10 09:00 | 2016-03-11 09:00 | 46, 165 |  |  | 0d |  | Hoàng Vũ | 8h |  | 78.75 |  |
| 49 | 1.1.1.6.2 | Danh sách tờ khai thuế TNCN-02/KK-TNCN | 4h | 2016-03-11 09:00 | 2016-03-11 14:00 | 48 |  |  | 0d |  | Hoàng Vũ | 4h |  | 43.75 |  |
| 50 | 1.1.1.6.3 | Báo cáo tờ khai thuế TNCN-02/KK-TNCN | 8h | 2016-03-11 14:00 | 2016-03-14 14:00 | 49, 141 |  |  | 0d |  | Hoàng Vũ | 8h |  | 78.75 |  |

Notes:
- 26: Bổ sung thęm điều kiện thuế BVMT
- 27: Khai báo danh sách thuế BVMT
- 28: Thêm tab: Thuế bảo vệ môi trường / Chờ nghiên cứu, chưa có hướng dẫn chi tiết cho trường hợp mua vào
- 29: Thêm tab: Thuế bảo vệ môi trường / Chờ nghiên cứu, chưa có hướng dẫn chi tiết cho trường hợp mua vào
- 30: Thêm tab: Thuế bảo vệ môi trường / Chờ nghiên cứu, chưa có hướng dẫn chi tiết cho trường hợp mua vào
- 31: Thęm tab: Thuế bảo vệ môi trường
- 32: Thęm tab: Thuế bảo vệ môi trường
- 33: Thęm tab: Thuế bảo vệ môi trường
- 34: Xử lý tương tự thuế GTGT
- 35: Xử lý tương tự thuế GTGT
- 36: Xử lý tương tự thuế GTGT
- 37: Xử lý tương tự thuế GTGT
- 39: Layout dữ liệu load lên tờ khai / -- Danh noted -- / Gôm, cập nhật màn h́nh hiện tại thành dạng Master-Detail có nhiều tab (tương tự cập nhật tờ khai GTGT)
- 44: Sửa màn hình Plugin thành màn hình Master-Detail
- 45: Xử lý tương tự thuế GTGT
- 46: Xử lý tương tự thuế GTGT
- 48: mẫu tờ khai: 02/KK-TNCN (Theo tháng và theo quư)
- 49: mẫu tờ khai: 02/KK-TNCN (Theo tháng và theo quư)

| ID | WBS | Task | Type | Duration | Start | Finish | Predecessors | Complete | Remaining | Total slack | Free slack | Constraint | Resources | Work | Actual work | Cost | Actual cost |
| --- | --- | --- | --- | --- | --- | --- | --- | --- | --- | --- | --- | --- | --- | --- | --- | --- | --- |
| 51 | 1.1.1.6.4 | **Cập nhật tờ khai quyết toán năm thuế TNCN-05/KK-TNCN** |  | 3.25d | 2016-03-14 14:00 | 2016-03-17 16:00 |  |  |  | 0d |  |  |  | 26h |  | 262.5 |  |
| 52 | 1.1.1.6.4.1 | Tờ khai quyết toán thuế TNCN (05KK-TNCN) |  | 8h | 2016-03-14 14:00 | 2016-03-15 14:00 | 50 |  |  | 0d |  |  | Hoàng Vũ | 8h |  | 78.75 |  |
| 53 | 1.1.1.6.4.2 | Bảng kê thu nhập chịu thuế và thu nhập cá nhân đối với thu nhập từ tiền lương.. Có ký hợp đồng lao động (05-1BK-TNCN) |  | 6h | 2016-03-15 14:00 | 2016-03-16 11:00 | 52 |  |  | 0d |  |  | Hoàng Vũ | 6h |  | 61.25 |  |
| 54 | 1.1.1.6.4.3 | Bảng kê thu nhập chịu thuế và thu nhập cá nhâận đã khấu trừ thu nhập từ tiến lương.. (05-2BK-TNCN) |  | 6h | 2016-03-16 11:00 | 2016-03-17 09:00 | 53, 155, 122 |  |  | 0d |  |  | Hoàng Vũ | 6h |  | 61.25 |  |
| 55 | 1.1.1.6.4.4 | Bảng kê thông tin người phụ thuộc giảm trừ gia cảnh (05-3BK-TNCN) |  | 6h | 2016-03-17 09:00 | 2016-03-17 16:00 | 54, 165 |  |  | 0d |  |  | Hoàng Vũ | 6h |  | 61.25 |  |
| 56 | 1.1.1.6.5 | Danh mục tờ khai quyết toán năm thuế TNCN-05/KK-TNCN |  | 4h | 2016-03-17 16:00 | 2016-03-18 11:00 | 55 |  |  | 0d |  |  | Hoàng Vũ | 4h |  | 43.75 |  |
| 57 | 1.1.1.6.6 | Báo cáo tờ khai quyết toán năm thuế TNCN-05/KK-TNCN |  | 8h | 2016-03-18 11:00 | 2016-03-21 11:00 | 56 |  |  | 0d |  |  | Hoàng Vũ | 8h |  | 78.75 |  |
| 58 | 1.1.2 | **Coding** |  | 190.12d | 2015-06-29 13:00 A | 2016-03-30 14:00 |  | 47% | 100.32d | 0d |  |  |  | 600h | 283.4h | 1,155 | 87.5 |
| 59 | 1.1.2.1 | **Danh mục chung** |  | 168.5d | 2015-06-29 13:00 A | 2016-02-29 17:00 |  | 67% | 56.17d | 0d |  |  |  | 12h | 8h | 131.25 | 87.5 |
| 60 | 1.1.2.1.1 | Danh mục gia hạn |  | 4h | 2015-06-29 13:00 A | 2015-06-29 17:00 A | 5 | 100% |  |  |  |  | Phát Danh | 4h | 4h | 43.75 | 43.75 |
| 61 | 1.1.2.1.2 | Danh mục ngành nghể |  | 4h | 2015-06-30 08:00 A | 2015-06-30 12:00 A | 6, 60 | 100% |  |  |  |  | Phát Danh | 4h | 4h | 43.75 | 43.75 |
| 62 | 1.1.2.1.3 | Danh mục ngành nghề có tỷ lệ thu nhập cao |  | 4h | 2016-02-29 13:00 | 2016-02-29 17:00 | 7, 94 |  |  | 0d |  |  | Phát Danh | 4h |  | 43.75 |  |
| 63 | 1.1.2.2 | **Thuế thu giá trị gia tăng** |  | 12d | 2015-12-11 08:00 A | 2015-12-28 17:00 A | 8 | 100% |  |  |  |  |  | 96h | 96h |  |  |
| 64 | 1.1.2.2.1 | **Cập nhật tờ khai thuế GTGT** |  | 10d | 2015-12-11 08:00 A | 2015-12-24 17:00 A |  | 100% |  |  |  |  |  | 80h | 80h |  |  |
| 65 | 1.1.2.2.1.1 | Tờ khai thuế GTGT (Tab 1) |  | 40h | 2015-12-11 08:00 A | 2015-12-17 17:00 A | 10, 61 | 100% |  |  |  | start no earlier than 2015-12-11 08:00 | Chiến Thắng | 40h | 40h |  |  |
| 66 | 1.1.2.2.1.2 | Khai giải trình, bổ sung GTGT (Tab 2) |  | 40h | 2015-12-18 08:00 A | 2015-12-24 17:00 A | 11, 65 | 100% |  |  |  |  | Chiến Thắng | 40h | 40h |  |  |
| 67 | 1.1.2.2.2 | Danh sách tờ khai thuế GTGT |  | 16h | 2015-12-25 08:00 A | 2015-12-28 17:00 A | 12, 66 | 100% |  |  |  |  | Chiến Thắng | 16h | 16h |  |  |
| 68 | 1.1.2.3 | Release nội bộ thuế GTGT | milestone | 0h | 2015-12-28 17:00 | 2015-12-28 17:00 | 63 |  |  | 35.62d | 0d |  | Phát Danh |  |  | 8.75 |  |
| 69 | 1.1.2.4 | **Thuế tiêu thu đặc biệt** |  | 30.38d | 2015-12-11 08:00 A | 2016-01-25 11:00 | 15 | 74% | 7.95d | 0d |  |  |  | 243h | 179.4h |  |  |
| 70 | 1.1.2.4.1 | Danh mục nhóm thuế TTDB |  | 5h | 2015-12-11 08:00 A | 2015-12-11 14:00 A |  | 100% |  |  |  | start no earlier than 2015-12-11 08:00 | Lệ Huyền | 5h | 5h |  |  |
| 71 | 1.1.2.4.2 | Danh sách bảng kê thuế TTDB bán ra |  | 12h | 2015-12-11 14:00 A | 2015-12-15 09:00 A | 17, 70 | 100% |  |  |  |  | Lệ Huyền | 12h | 12h |  |  |
| 72 | 1.1.2.4.3 | Cập nhật bảng kê thuế TTDB bán ra |  | 24h | 2015-12-15 09:00 A | 2015-12-18 09:00 A | 18, 71 | 100% |  |  |  |  | Lệ Huyền | 24h | 24h |  |  |
| 73 | 1.1.2.4.4 | Danh sách bảng kê thuế TTDB mua vào |  | 12h | 2015-12-18 09:00 A | 2015-12-21 14:00 A | 19, 72 | 100% |  |  |  |  | Lệ Huyền | 12h | 12h |  |  |
| 74 | 1.1.2.4.5 | Cập nhật bảng kê thuế TTDB mua vào |  | 24h | 2015-12-21 14:00 A | 2015-12-24 14:00 A | 20, 73 | 100% |  |  |  |  | Lệ Huyền | 24h | 24h |  |  |
| 75 | 1.1.2.4.6 | Danh sách tờ khai thuế TTDB |  | 20h | 2015-12-24 14:00 A | 2015-12-29 09:00 A | 21, 74 | 100% |  |  |  |  | Lệ Huyền | 20h | 20h |  |  |
| 76 | 1.1.2.4.7 | Cập nhật tờ khai thuế TTDB |  | 50h | 2015-12-29 09:00 A | 2016-01-07 11:00 A | 22, 75 | 100% |  |  |  |  | Lệ Huyền | 50h | 50h |  |  |
| 77 | 1.1.2.4.8 | Báo cáo tờ khai thuế TTDB |  | 24h | 2016-01-07 11:00 A | 2016-01-12 11:00 | 23, 76 | 65% | 8.4h | 2.1d | 0d |  | Lệ Huyền | 24h | 15.6h |  |  |
| 78 | 1.1.2.4.9 | Báo cáo khai giải trình, bổ sung TTDB |  | 24h | 2016-01-12 11:00 A | 2016-01-15 11:00 | 24, 77 | 70% | 7.2h | 0d |  |  | Lệ Huyền | 24h | 16.8h |  |  |
| 79 | 1.1.2.4.10 | Báo cáo khai giải trình, bổ sung GTGT |  | 24h | 2016-01-15 11:00 | 2016-01-20 11:00 | 13, 78 |  |  | 0d |  |  | Lệ Huyền | 24h |  |  |  |
| 80 | 1.1.2.4.11 | Báo cáo tờ khai thuế GTGT |  | 24h | 2016-01-20 11:00 | 2016-01-25 11:00 | 79 |  |  | 0d |  |  | Lệ Huyền | 24h |  |  |  |
| 81 | 1.1.2.5 | Release nội bộ thuế TTDB | milestone | 0h | 2016-01-25 11:00 | 2016-01-25 11:00 | 69 |  |  | 9.12d | 0d |  | Phát Danh |  |  | 8.75 |  |

Notes:
- 51: mẫu tờ khai: 05/KK-TNCN
- 56: mẫu tờ khai: 05/KK-TNCN
- 60: Danh mục hệ thống, không cần màn hình nhập liệu
- 61: Danh mục hệ thống, không cần màn hình nhập liệu
- 62: Danh mục hệ thống, không cần màn hình nhập liệu
- 64: Bổ sung Danh sách bảng kê
- 70: Update Mă thuế TTDB để kết xuất ra file XML đúng mă như HTKK
- 71: Bổ sung Danh sách bảng kê / -> Màn h́nh mới
- 72: Bổ sung thêm Check để kiêm tra thang/lần phát sinh / -> Màn h́nh mới
- 73: Update nội dung gì?
- 74: Update nội dung gì?
- 75: Bổ sung Danh sách tờ khai / -> Màn h́nh mới
- 76: Sửa màn hình Plugin thành màn hình Master-Detail / -- Danh noted -- / Tương tự thuế GTGT
- 77: + Đổi mŕn hěnh báo cáo cũ thŕnh dạng nhiều tabs (gồm Tờ khai vŕ Tờ GTBS). / + Xuất XML đính kčm BKMV, BKBR (kiểm tra xuất kčm tương tự tờ khai GTGT) vŕ Tờ GTBS / + Bổ sung các button chức năng [Sửa mẫu], [Ra Excel] xử lý theo tab đang được chọn
- 78: Báo cáo mới
- 79: -> Báo cáo mới / Bổ sung Danh sách bảng kê -> Chưa rơ sao lại có nội dung này ở đy
- 80: Bổ sung Danh sách tờ khai / -- Danh noted -- / + Đổi màn hình báo cáo cũ thành dạng nhiều tabs (gồm Tờ khai và Tờ GTBS). / + Xuất XML bổ sung thêm Tờ GTBS / + Bổ sung các button chức năng [Sửa mẫu], [Ra Excel] xử lư theo tab đang được chọn

| ID | WBS | Task | Type | Duration | Start | Finish | Predecessors | Total slack | Free slack | Resources | Work | Cost |
| --- | --- | --- | --- | --- | --- | --- | --- | --- | --- | --- | --- | --- |
| 82 | 1.1.2.6 | **Thuế bảo vệ môi trường** |  | 19.12d | 2016-01-25 11:00 | 2016-02-29 12:00 |  | 0d |  |  | 153h |  |
| 83 | 1.1.2.6.1 | Danh mục vật tư |  | 4h | 2016-01-25 11:00 | 2016-01-25 16:00 | 26, 80 | 0d |  | Lệ Huyền | 4h |  |
| 84 | 1.1.2.6.2 | Danh mục nhóm thuế BVMT |  | 8h | 2016-01-25 16:00 | 2016-01-26 16:00 | 27, 83 | 0d |  | Lệ Huyền | 8h |  |
| 85 | 1.1.2.6.3 | Cập nhật hóa đơn mua vào kiêm phiếu nhập kho |  | 3h | 2016-01-26 16:00 | 2016-01-27 10:00 | 28, 84 | 0d |  | Lệ Huyền | 3h |  |
| 86 | 1.1.2.6.4 | Cập nhật hóa đơn mua hàng nhập khẩu |  | 3h | 2016-01-27 10:00 | 2016-01-27 14:00 | 29, 85 | 0d |  | Lệ Huyền | 3h |  |
| 87 | 1.1.2.6.5 | Cập nhật hóa đơn mua dịch vụ |  | 3h | 2016-01-27 14:00 | 2016-01-27 17:00 | 30, 86 | 0d |  | Lệ Huyền | 3h |  |
| 88 | 1.1.2.6.6 | Cập nhật hóa đơn bán hàng kiêm phiếu xuất kho |  | 24h | 2016-01-28 08:00 | 2016-02-01 17:00 | 31, 87 | 0d |  | Lệ Huyền | 24h |  |
| 89 | 1.1.2.6.7 | Cập nhật hóa đơn bán dịch vụ |  | 24h | 2016-02-02 08:00 | 2016-02-04 17:00 | 32, 88 | 0d |  | Lệ Huyền | 24h |  |
| 90 | 1.1.2.6.8 | Cập nhật hóa đơn hàng bán trả lại giảm giá |  | 24h | 2016-02-15 08:00 | 2016-02-17 17:00 | 33, 89 | 0d |  | Lệ Huyền | 24h |  |
| 91 | 1.1.2.6.9 | Cập nhật tờ khai thuế BVMT |  | 40h | 2016-02-18 08:00 | 2016-02-24 17:00 | 34, 90 | 0d |  | Lệ Huyền | 40h |  |
| 92 | 1.1.2.6.10 | Danh sách tờ khai thuế BVMT |  | 4h | 2016-02-25 08:00 | 2016-02-25 12:00 | 35, 91 | 0d |  | Lệ Huyền | 4h |  |
| 93 | 1.1.2.6.11 | Báo cáo tờ khai thuế BVMT |  | 8h | 2016-02-25 13:00 | 2016-02-26 12:00 | 36, 92 | 0d |  | Lệ Huyền | 8h |  |
| 94 | 1.1.2.6.12 | Báo cáo khai giải trình, bổ sung BVMT |  | 8h | 2016-02-26 13:00 | 2016-02-29 12:00 | 37, 93 | 0d |  | Lệ Huyền | 8h |  |
| 95 | 1.1.2.7 | Release nội bộ thuế BVMT | milestone | 0h | 2016-02-29 12:00 | 2016-02-29 12:00 | 82 | 2d | 0d | Phát Danh |  | 8.75 |
| 96 | 1.1.2.8 | **Thuế thu nhập doanh nghiệp** |  | 4.75d | 2016-03-01 08:00 | 2016-03-07 15:00 | 38 | 0d |  |  | 38h | 393.75 |
| 97 | 1.1.2.8.1 | **Cập nhật tờ khai thuế TNDN** |  | 2.25d | 2016-03-01 08:00 | 2016-03-03 10:00 |  | 0d |  |  | 18h | 192.5 |
| 98 | 1.1.2.8.1.1 | Tờ khai thuế TNDN (Tab 1) |  | 6h | 2016-03-01 08:00 | 2016-03-01 15:00 | 40, 62 | 0d |  | Phát Danh | 6h | 61.25 |
| 99 | 1.1.2.8.1.2 | Kết quả kinh doanh theo báo cáo tài chính (Tab 2) |  | 4h | 2016-03-01 15:00 | 2016-03-02 10:00 | 41, 98 | 0d |  | Phát Danh | 4h | 43.75 |
| 100 | 1.1.2.8.1.3 | Kết chuyển lãi lỗ (Tab 3) |  | 4h | 2016-03-02 10:00 | 2016-03-02 15:00 | 42, 99 | 0d |  | Phát Danh | 4h | 43.75 |
| 101 | 1.1.2.8.1.4 | Khai giải trình, bổ sung TNDN (Tab 4) |  | 4h | 2016-03-02 15:00 | 2016-03-03 10:00 | 43, 100 | 0d |  | Phát Danh | 4h | 43.75 |
| 102 | 1.1.2.8.2 | Danh sách tờ khai thuế TNDN |  | 4h | 2016-03-03 10:00 | 2016-03-03 15:00 | 44, 101 | 0d |  | Phát Danh | 4h | 43.75 |
| 103 | 1.1.2.8.3 | Báo cáo tờ khai thuế TNDN |  | 8h | 2016-03-03 15:00 | 2016-03-04 15:00 | 45, 102 | 0d |  | Phát Danh | 8h | 78.75 |
| 104 | 1.1.2.8.4 | Báo cáo khai giải trình, bổ sung TNDN |  | 8h | 2016-03-04 15:00 | 2016-03-07 15:00 | 46, 103 | 0d |  | Phát Danh | 8h | 78.75 |
| 105 | 1.1.2.9 | Release nội bộ thuế TNDN | milestone | 0h | 2016-03-07 15:00 | 2016-03-07 15:00 | 96 | 0d |  | Phát Danh |  | 8.75 |

Notes:
- 83: Bổ sung thęm điều kiện thuế BVMT
- 84: Khai báo danh sách thuế BVMT
- 85: Thęm tab: Thuế bảo vệ môi trường
- 86: Thęm tab: Thuế bảo vệ môi trường
- 87: Thęm tab: Thuế bảo vệ môi trường
- 88: Thęm tab: Thuế bảo vệ môi trường
- 89: Thęm tab: Thuế bảo vệ môi trường
- 90: Thęm tab: Thuế bảo vệ môi trường
- 91: Xử lý tương tự thuế GTGT
- 92: Xử lý tương tự thuế GTGT
- 93: Xử lý tương tự thuế GTGT
- 94: Xử lý tương tự thuế GTGT
- 97: Layout dữ liệu load lên tờ khai / -- Danh noted -- / Gôm, cập nhật màn h́nh hiện tại thành dạng Master-Detail có nhiều tab (tương tự cập nhật tờ khai GTGT)
- 102: Sửa màn hình Plugin thành màn hình Master-Detail
- 103: Xử lý tương tự thuế GTGT
- 104: Xử lý tương tự thuế GTGT

| ID | WBS | Task | Type | Duration | Start | Finish | Predecessors | Total slack | Free slack | Constraint | Resources | Work | Cost |
| --- | --- | --- | --- | --- | --- | --- | --- | --- | --- | --- | --- | --- | --- |
| 106 | 1.1.2.10 | **Thuế thu nhập cá nhân** |  | 7.25d | 2016-03-21 11:00 | 2016-03-30 14:00 | 47 | 0d |  |  |  | 58h | 586.25 |
| 107 | 1.1.2.10.1 | Cập nhật tờ khai thuế TNCN-02/KK-TNCN |  | 8h | 2016-03-21 11:00 | 2016-03-22 11:00 | 48, 104 | 0d |  |  | Phát Danh | 8h | 78.75 |
| 108 | 1.1.2.10.2 | Danh sách tờ khai thuế TNCN-02/KK-TNCN |  | 4h | 2016-03-22 11:00 | 2016-03-22 16:00 | 49, 107 | 0d |  |  | Phát Danh | 4h | 43.75 |
| 109 | 1.1.2.10.3 | Báo cáo tờ khai thuế TNCN-02/KK-TNCN |  | 8h | 2016-03-22 16:00 | 2016-03-23 16:00 | 50, 108 | 0d |  |  | Phát Danh | 8h | 78.75 |
| 110 | 1.1.2.10.4 | **Cập nhật tờ khai quyết toán năm thuế TNCN-05/KK-TNCN** |  | 3.25d | 2016-03-23 16:00 | 2016-03-29 09:00 |  | 0d |  |  |  | 26h | 262.5 |
| 111 | 1.1.2.10.4.1 | Tờ khai quyết toán thuế TNCN (05KK-TNCN) |  | 8h | 2016-03-23 16:00 | 2016-03-24 16:00 | 52, 109 | 0d |  |  | Phát Danh | 8h | 78.75 |
| 112 | 1.1.2.10.4.2 | Bảng kê thu nhập chịu thuế và thu nhập cá nhân đối với thu nhập từ tiền lương.. Có ký hợp đồng lao động (05-1BK-TNCN) |  | 6h | 2016-03-24 16:00 | 2016-03-25 14:00 | 53, 111 | 0d |  |  | Phát Danh | 6h | 61.25 |
| 113 | 1.1.2.10.4.3 | Bảng kê thu nhập chịu thuế và thu nhập cá nhâận đã khấu trừ thu nhập từ tiến lương.. (05-2BK-TNCN) |  | 6h | 2016-03-25 14:00 | 2016-03-28 11:00 | 54, 112 | 0d |  |  | Phát Danh | 6h | 61.25 |
| 114 | 1.1.2.10.4.4 | Bảng kê thông tin người phụ thuộc giảm trừ gia cảnh (05-3BK-TNCN) |  | 6h | 2016-03-28 11:00 | 2016-03-29 09:00 | 55, 113 | 0d |  |  | Phát Danh | 6h | 61.25 |
| 115 | 1.1.2.10.5 | Danh mục tờ khai quyết toán năm thuế TNCN-05/KK-TNCN |  | 4h | 2016-03-29 09:00 | 2016-03-29 14:00 | 56, 114 | 0d |  |  | Phát Danh | 4h | 43.75 |
| 116 | 1.1.2.10.6 | Báo cáo tờ khai quyết toán năm thuế TNCN-05/KK-TNCN |  | 8h | 2016-03-29 14:00 | 2016-03-30 14:00 | 57, 115 | 0d |  |  | Phát Danh | 8h | 78.75 |
| 117 | 1.1.2.11 | Release nội bộ thuế TNCN | milestone | 0h | 2016-03-30 14:00 | 2016-03-30 14:00 | 106 | 0d |  |  | Phát Danh |  | 8.75 |
| 118 | 1.1.3 | **Test** |  | 45.25d | 2016-01-25 08:00 | 2016-04-05 10:00 |  | 0d |  | start no earlier than 2016-01-25 08:00 |  | 119h | 1,522.5 |
| 119 | 1.1.3.1 | **Danh mục chung** |  | 22.75d | 2016-01-25 08:00 | 2016-03-03 15:00 | 68 | 2d |  |  |  | 6h | 78.75 |
| 120 | 1.1.3.1.1 | Danh mục gia hạn |  | 2h | 2016-01-25 08:00 | 2016-01-25 10:00 | 21, 60 | 8.12d | 0d |  | Hoàng Vũ | 2h | 26.25 |
| 121 | 1.1.3.1.2 | Danh mục ngành nghể |  | 2h | 2016-01-25 10:00 | 2016-01-25 12:00 | 61, 120 | 8.12d | 0d |  | Hoàng Vũ | 2h | 26.25 |
| 122 | 1.1.3.1.3 | Danh mục ngành nghề có tỷ lệ thu nhập cao |  | 2h | 2016-03-03 13:00 | 2016-03-03 15:00 | 62, 154 | 2d |  |  | Hoàng Vũ | 2h | 26.25 |
| 123 | 1.1.3.2 | **Thuế thu giá trị gia tăng** |  | 0.88d | 2016-01-25 13:00 | 2016-01-26 11:00 |  | 8.12d | 0d |  |  | 7h | 87.5 |
| 124 | 1.1.3.2.1 | **Cập nhật tờ khai thuế GTGT** |  | 0.62d | 2016-01-25 13:00 | 2016-01-26 09:00 |  | 8.12d |  |  |  | 5h | 61.25 |
| 125 | 1.1.3.2.1.1 | Tờ khai thuế GTGT (Tab 1) |  | 3h | 2016-01-25 13:00 | 2016-01-25 16:00 | 65, 121 | 8.12d | 0d |  | Hoàng Vũ | 3h | 35 |
| 126 | 1.1.3.2.1.2 | Khai giải trình, bổ sung GTGT (Tab 2) |  | 2h | 2016-01-25 16:00 | 2016-01-26 09:00 | 66, 125 | 8.12d | 0d |  | Hoàng Vũ | 2h | 26.25 |
| 127 | 1.1.3.2.2 | Danh sách tờ khai thuế GTGT |  | 2h | 2016-01-26 09:00 | 2016-01-26 11:00 | 67, 126 | 8.12d |  |  | Hoàng Vũ | 2h | 26.25 |
| 128 | 1.1.3.3 | Release thuế GTGT | milestone | 0h | 2016-01-26 11:00 | 2016-01-26 11:00 | 123 | 17.62d | 8.5d |  | Phát Danh; Hoàng Vũ |  | 17.5 |
| 129 | 1.1.3.4 | **Thuế tiêu thu đặc biệt** |  | 4.25d | 2016-01-26 11:00 | 2016-02-01 14:00 | 81, 123 | 8.12d | 0d |  |  | 34h | 393.75 |
| 130 | 1.1.3.4.1 | Danh mục nhóm thuế TTDB |  | 1h | 2016-01-26 11:00 | 2016-01-26 12:00 |  | 8.12d | 0d |  | Hoàng Vũ | 1h | 17.5 |
| 131 | 1.1.3.4.2 | Danh sách bảng kê thuế TTDB bán ra |  | 2h | 2016-01-26 13:00 | 2016-01-26 15:00 | 71, 130 | 8.12d | 0d |  | Hoàng Vũ | 2h | 26.25 |
| 132 | 1.1.3.4.3 | Cập nhật bảng kê thuế TTDB bán ra |  | 3h | 2016-01-26 15:00 | 2016-01-27 09:00 | 72, 131 | 8.12d | 0d |  | Hoàng Vũ | 3h | 35 |
| 133 | 1.1.3.4.4 | Danh sách bảng kê thuế TTDB mua vào |  | 2h | 2016-01-27 09:00 | 2016-01-27 11:00 | 73, 132 | 8.12d | 0d |  | Hoàng Vũ | 2h | 26.25 |
| 134 | 1.1.3.4.5 | Cập nhật bảng kê thuế TTDB mua vào |  | 3h | 2016-01-27 11:00 | 2016-01-27 15:00 | 74, 133 | 8.12d | 0d |  | Hoàng Vũ | 3h | 35 |
| 135 | 1.1.3.4.6 | Danh sách tờ khai thuế TTDB |  | 2h | 2016-01-27 15:00 | 2016-01-27 17:00 | 75, 134 | 8.12d | 0d |  | Hoàng Vũ | 2h | 26.25 |
| 136 | 1.1.3.4.7 | Cập nhật tờ khai thuế TTDB |  | 5h | 2016-01-28 08:00 | 2016-01-28 14:00 | 76, 135 | 8.12d | 0d |  | Hoàng Vũ | 5h | 52.5 |
| 137 | 1.1.3.4.8 | Báo cáo tờ khai thuế TTDB |  | 4h | 2016-01-28 14:00 | 2016-01-29 09:00 | 77, 136 | 8.12d | 0d |  | Hoàng Vũ | 4h | 43.75 |
| 138 | 1.1.3.4.9 | Báo cáo khai giải trình, bổ sung TTDB |  | 4h | 2016-01-29 09:00 | 2016-01-29 14:00 | 78, 137 | 8.12d | 0d |  | Hoàng Vũ | 4h | 43.75 |
| 139 | 1.1.3.4.10 | Báo cáo khai giải trình, bổ sung GTGT |  | 4h | 2016-01-29 14:00 | 2016-02-01 09:00 | 79, 138 | 8.12d | 0d |  | Hoàng Vũ | 4h | 43.75 |
| 140 | 1.1.3.4.11 | Báo cáo tờ khai thuế GTGT |  | 4h | 2016-02-01 09:00 | 2016-02-01 14:00 | 80, 139 | 8.12d |  |  | Hoàng Vũ | 4h | 43.75 |
| 141 | 1.1.3.5 | Release thuế TTDB | milestone | 0h | 2016-02-01 14:00 | 2016-02-01 14:00 | 129 | 8.12d | 0d |  | Phát Danh; Hoàng Vũ |  | 17.5 |

Notes:
- 107: mẫu tờ khai: 02/KK-TNCN (Theo tháng và theo quư)
- 108: mẫu tờ khai: 02/KK-TNCN (Theo tháng và theo quư)
- 110: mẫu tờ khai: 05/KK-TNCN
- 115: mẫu tờ khai: 05/KK-TNCN
- 124: Bổ sung Danh sách bảng kê
- 130: Update Mă thuế TTDB để kết xuất ra file XML đúng mă như HTKK
- 131: Bổ sung Danh sách bảng kê / -> Màn h́nh mới
- 132: Bổ sung thêm Check để kiêm tra thang/lần phát sinh / -> Màn h́nh mới
- 133: Update nội dung gì?
- 134: Update nội dung gì?
- 135: Bổ sung Danh sách tờ khai / -> Màn h́nh mới
- 136: Sửa màn hình Plugin thành màn hình Master-Detail / -- Danh noted -- / Tương tự thuế GTGT
- 137: + Đổi mŕn hěnh báo cáo cũ thŕnh dạng nhiều tabs (gồm Tờ khai vŕ Tờ GTBS). / + Xuất XML đính kčm BKMV, BKBR (kiểm tra xuất kčm tương tự tờ khai GTGT) vŕ Tờ GTBS / + Bổ sung các button chức năng [Sửa mẫu], [Ra Excel] xử lý theo tab đang được chọn
- 138: Báo cáo mới
- 139: -> Báo cáo mới / Bổ sung Danh sách bảng kê -> Chưa rơ sao lại có nội dung này ở đy
- 140: Bổ sung Danh sách tờ khai / -- Danh noted -- / + Đổi màn hình báo cáo cũ thành dạng nhiều tabs (gồm Tờ khai và Tờ GTBS). / + Xuất XML bổ sung thêm Tờ GTBS / + Bổ sung các button chức năng [Sửa mẫu], [Ra Excel] xử lư theo tab đang được chọn

| ID | WBS | Task | Type | Duration | Start | Finish | Predecessors | Total slack | Free slack | Resources | Work | Cost |
| --- | --- | --- | --- | --- | --- | --- | --- | --- | --- | --- | --- | --- |
| 142 | 1.1.3.6 | **Thuế bảo vệ môi trường** |  | 3d | 2016-02-29 13:00 | 2016-03-03 12:00 | 95 | 2d | 0d |  | 24h | 315 |
| 143 | 1.1.3.6.1 | Danh mục vật tư |  | 1h | 2016-02-29 13:00 | 2016-02-29 14:00 | 46, 83, 140 | 2d | 0d | Hoàng Vũ | 1h | 17.5 |
| 144 | 1.1.3.6.2 | Danh mục nhóm thuế BVMT |  | 2h | 2016-02-29 14:00 | 2016-02-29 16:00 | 84, 143 | 2d | 0d | Hoàng Vũ | 2h | 26.25 |
| 145 | 1.1.3.6.3 | Cập nhật hóa đơn mua vào kiêm phiếu nhập kho |  | 1h | 2016-02-29 16:00 | 2016-02-29 17:00 | 85, 144 | 2d | 0d | Hoàng Vũ | 1h | 17.5 |
| 146 | 1.1.3.6.4 | Cập nhật hóa đơn mua hàng nhập khẩu |  | 1h | 2016-03-01 08:00 | 2016-03-01 09:00 | 86, 145 | 2d | 0d | Hoàng Vũ | 1h | 17.5 |
| 147 | 1.1.3.6.5 | Cập nhật hóa đơn mua dịch vụ |  | 1h | 2016-03-01 09:00 | 2016-03-01 10:00 | 87, 146 | 2d | 0d | Hoàng Vũ | 1h | 17.5 |
| 148 | 1.1.3.6.6 | Cập nhật hóa đơn bán hàng kiêm phiếu xuất kho |  | 1h | 2016-03-01 10:00 | 2016-03-01 11:00 | 88, 147 | 2d | 0d | Hoàng Vũ | 1h | 17.5 |
| 149 | 1.1.3.6.7 | Cập nhật hóa đơn bán dịch vụ |  | 1h | 2016-03-01 11:00 | 2016-03-01 12:00 | 89, 148 | 2d | 0d | Hoàng Vũ | 1h | 17.5 |
| 150 | 1.1.3.6.8 | Cập nhật hóa đơn hàng bán trả lại giảm giá |  | 1h | 2016-03-01 13:00 | 2016-03-01 14:00 | 90, 149 | 2d | 0d | Hoàng Vũ | 1h | 17.5 |
| 151 | 1.1.3.6.9 | Cập nhật tờ khai thuế BVMT |  | 5h | 2016-03-01 14:00 | 2016-03-02 10:00 | 91, 150 | 2d | 0d | Hoàng Vũ | 5h | 52.5 |
| 152 | 1.1.3.6.10 | Danh sách tờ khai thuế BVMT |  | 2h | 2016-03-02 10:00 | 2016-03-02 12:00 | 92, 151 | 2d | 0d | Hoàng Vũ | 2h | 26.25 |
| 153 | 1.1.3.6.11 | Báo cáo tờ khai thuế BVMT |  | 4h | 2016-03-02 13:00 | 2016-03-02 17:00 | 93, 152 | 2d | 0d | Hoàng Vũ | 4h | 43.75 |
| 154 | 1.1.3.6.12 | Báo cáo khai giải trình, bổ sung BVMT |  | 4h | 2016-03-03 08:00 | 2016-03-03 12:00 | 94, 153 | 2d | 0d | Hoàng Vũ | 4h | 43.75 |
| 155 | 1.1.3.7 | Release thuế BVMT | milestone | 0h | 2016-03-03 12:00 | 2016-03-03 12:00 | 142 | 2.25d |  | Phát Danh; Hoàng Vũ |  | 17.5 |
| 156 | 1.1.3.8 | **Thuế thu nhập doanh nghiệp** |  | 2.38d | 2016-03-07 15:00 | 2016-03-10 09:00 | 105 | 0d |  |  | 19h | 227.5 |
| 157 | 1.1.3.8.1 | **Cập nhật tờ khai thuế TNDN** |  | 1.12d | 2016-03-07 15:00 | 2016-03-08 16:00 |  | 0d |  |  | 9h | 113.75 |
| 158 | 1.1.3.8.1.1 | Tờ khai thuế TNDN (Tab 1) |  | 3h | 2016-03-07 15:00 | 2016-03-08 09:00 | 98, 122, 155 | 0d |  | Hoàng Vũ | 3h | 35 |
| 159 | 1.1.3.8.1.2 | Kết quả kinh doanh theo báo cáo tài chính (Tab 2) |  | 2h | 2016-03-08 09:00 | 2016-03-08 11:00 | 99, 158 | 0d |  | Hoàng Vũ | 2h | 26.25 |
| 160 | 1.1.3.8.1.3 | Kết chuyển lãi lỗ (Tab 3) |  | 2h | 2016-03-08 11:00 | 2016-03-08 14:00 | 100, 159 | 0d |  | Hoàng Vũ | 2h | 26.25 |
| 161 | 1.1.3.8.1.4 | Khai giải trình, bổ sung TNDN (Tab 4) |  | 2h | 2016-03-08 14:00 | 2016-03-08 16:00 | 101, 160 | 0d |  | Hoàng Vũ | 2h | 26.25 |
| 162 | 1.1.3.8.2 | Danh sách tờ khai thuế TNDN |  | 2h | 2016-03-08 16:00 | 2016-03-09 09:00 | 102, 161 | 0d |  | Hoàng Vũ | 2h | 26.25 |
| 163 | 1.1.3.8.3 | Báo cáo tờ khai thuế TNDN |  | 4h | 2016-03-09 09:00 | 2016-03-09 14:00 | 103, 162 | 0d |  | Hoàng Vũ | 4h | 43.75 |
| 164 | 1.1.3.8.4 | Báo cáo khai giải trình, bổ sung TNDN |  | 4h | 2016-03-09 14:00 | 2016-03-10 09:00 | 104, 163 | 0d |  | Hoàng Vũ | 4h | 43.75 |
| 165 | 1.1.3.9 | Release thuế TNDN | milestone | 0h | 2016-03-10 09:00 | 2016-03-10 09:00 | 156 | 0d |  | Phát Danh; Hoàng Vũ |  | 17.5 |

Notes:
- 143: Bổ sung thęm điều kiện thuế BVMT
- 144: Khai báo danh sách thuế BVMT
- 145: Thęm tab: Thuế bảo vệ môi trường
- 146: Thęm tab: Thuế bảo vệ môi trường
- 147: Thęm tab: Thuế bảo vệ môi trường
- 148: Thęm tab: Thuế bảo vệ môi trường
- 149: Thęm tab: Thuế bảo vệ môi trường
- 150: Thęm tab: Thuế bảo vệ môi trường
- 151: Xử lý tương tự thuế GTGT
- 152: Xử lý tương tự thuế GTGT
- 153: Xử lý tương tự thuế GTGT
- 154: Xử lý tương tự thuế GTGT
- 157: Layout dữ liệu load lên tờ khai / -- Danh noted -- / Gôm, cập nhật màn h́nh hiện tại thành dạng Master-Detail có nhiều tab (tương tự cập nhật tờ khai GTGT)
- 162: Sửa màn hình Plugin thành màn hình Master-Detail
- 163: Xử lý tương tự thuế GTGT
- 164: Xử lý tương tự thuế GTGT

| ID | WBS | Task | Type | Duration | Start | Finish | Predecessors | Total slack | Resources | Work | Cost |
| --- | --- | --- | --- | --- | --- | --- | --- | --- | --- | --- | --- |
| 166 | 1.1.3.10 | **Thuế thu nhập cá nhân** |  | 3.62d | 2016-03-30 14:00 | 2016-04-05 10:00 | 117 | 0d |  | 29h | 332.5 |
| 167 | 1.1.3.10.1 | Cập nhật tờ khai thuế TNCN-02/KK-TNCN |  | 4h | 2016-03-30 14:00 | 2016-03-31 09:00 | 107, 164 | 0d | Hoàng Vũ | 4h | 43.75 |
| 168 | 1.1.3.10.2 | Danh sách tờ khai thuế TNCN-02/KK-TNCN |  | 2h | 2016-03-31 09:00 | 2016-03-31 11:00 | 108, 167 | 0d | Hoàng Vũ | 2h | 26.25 |
| 169 | 1.1.3.10.3 | Báo cáo tờ khai thuế TNCN-02/KK-TNCN |  | 4h | 2016-03-31 11:00 | 2016-03-31 16:00 | 109, 168 | 0d | Hoàng Vũ | 4h | 43.75 |
| 170 | 1.1.3.10.4 | **Cập nhật tờ khai quyết toán năm thuế TNCN-05/KK-TNCN** |  | 1.62d | 2016-03-31 16:00 | 2016-04-04 12:00 |  | 0d |  | 13h | 148.75 |
| 171 | 1.1.3.10.4.1 | Tờ khai quyết toán thuế TNCN (05KK-TNCN) |  | 4h | 2016-03-31 16:00 | 2016-04-01 11:00 | 111, 169 | 0d | Hoàng Vũ | 4h | 43.75 |
| 172 | 1.1.3.10.4.2 | Bảng kê thu nhập chịu thuế và thu nhập cá nhân đối với thu nhập từ tiền lương.. Có ký hợp đồng lao động (05-1BK-TNCN) |  | 3h | 2016-04-01 11:00 | 2016-04-01 15:00 | 112, 171 | 0d | Hoàng Vũ | 3h | 35 |
| 173 | 1.1.3.10.4.3 | Bảng kê thu nhập chịu thuế và thu nhập cá nhâận đã khấu trừ thu nhập từ tiến lương.. (05-2BK-TNCN) |  | 3h | 2016-04-01 15:00 | 2016-04-04 09:00 | 113, 172 | 0d | Hoàng Vũ | 3h | 35 |
| 174 | 1.1.3.10.4.4 | Bảng kê thông tin người phụ thuộc giảm trừ gia cảnh (05-3BK-TNCN) |  | 3h | 2016-04-04 09:00 | 2016-04-04 12:00 | 114, 173 | 0d | Hoàng Vũ | 3h | 35 |
| 175 | 1.1.3.10.5 | Danh mục tờ khai quyết toán năm thuế TNCN-05/KK-TNCN |  | 2h | 2016-04-04 13:00 | 2016-04-04 15:00 | 115, 174 | 0d | Hoàng Vũ | 2h | 26.25 |
| 176 | 1.1.3.10.6 | Báo cáo tờ khai quyết toán năm thuế TNCN-05/KK-TNCN |  | 4h | 2016-04-04 15:00 | 2016-04-05 10:00 | 116, 175 | 0d | Hoàng Vũ | 4h | 43.75 |
| 177 | 1.1.3.11 | Release thuế TNCN | milestone | 0h | 2016-04-05 10:00 | 2016-04-05 10:00 | 166 | 0d | Phát Danh; Hoàng Vũ |  | 17.5 |
| 178 | 1.2 | Hoàn thành báo cáo thuế | milestone | 0h | 2016-04-05 10:00 | 2016-04-05 10:00 | 2 | 0d |  |  |  |

Notes:
- 167: mẫu tờ khai: 02/KK-TNCN (Theo tháng và theo quư)
- 168: mẫu tờ khai: 02/KK-TNCN (Theo tháng và theo quư)
- 170: mẫu tờ khai: 05/KK-TNCN
- 175: mẫu tờ khai: 05/KK-TNCN
